# Projeto IAPSI

Schedule from MS Project, 2024-11-25 to 2025-01-11, costs in €.

## Calendars

- Standard: Mon-Fri 08:00-12:00, 13:00-17:00; Sat-Sun off. Exceptions (off unless hours are given): 2024-12-25 (Natal), 2025-01-01 (Ano Novo).

## Resources

| Resource |
| --- |
| Diego Teixeira |
| Eduardo Carvalho |
| Miguel Filipe |

## Schedule

| ID | WBS | Task | Type | Duration | Start | Finish | Predecessors | Total slack | Free slack | Constraint | Resources | Work | Cost |
| --- | --- | --- | --- | --- | --- | --- | --- | --- | --- | --- | --- | --- | --- |
| 1 | 1 | **Projeto** |  | 34d? | 2024-11-25 08:00 | 2025-01-11 17:00 |  |  |  |  |  | 290h | 2,900 |
| 2 | 1.1 | **Reunião Semanal** |  | 28.25d | 2024-11-28 08:00 | 2025-01-09 10:00 |  | 1.75d |  |  |  | 42h | 420 |
| 3 | 1.1.1 | Reunião Semanal 1 |  | 2h | 2024-11-28 08:00 | 2024-11-28 10:00 |  | 29.75d |  | start no earlier than 2024-11-28 08:00 | Diego Teixeira; Eduardo Carvalho; Miguel Filipe | 6h | 60 |
| 4 | 1.1.2 | Reunião Semanal 2 |  | 2h | 2024-12-05 08:00 | 2024-12-05 10:00 |  | 24.75d |  | start no earlier than 2024-12-05 08:00 | Diego Teixeira; Eduardo Carvalho; Miguel Filipe | 6h | 60 |
| 5 | 1.1.3 | Reunião Semanal 3 |  | 2h | 2024-12-12 08:00 | 2024-12-12 10:00 |  | 19.75d |  | start no earlier than 2024-12-12 08:00 | Diego Teixeira; Eduardo Carvalho; Miguel Filipe | 6h | 60 |
| 6 | 1.1.4 | Reunião Semanal 4 |  | 2h | 2024-12-19 08:00 | 2024-12-19 10:00 |  | 14.75d |  | start no earlier than 2024-12-19 08:00 | Diego Teixeira; Eduardo Carvalho; Miguel Filipe | 6h | 60 |
| 7 | 1.1.5 | Reunião Semanal 5 |  | 2h | 2024-12-26 08:00 | 2024-12-26 10:00 |  | 10.75d |  | start no earlier than 2024-12-26 08:00 | Diego Teixeira; Eduardo Carvalho; Miguel Filipe | 6h | 60 |
| 8 | 1.1.6 | Reunião Semanal 6 |  | 2h | 2025-01-02 08:00 | 2025-01-02 10:00 |  | 6.75d |  | start no earlier than 2025-01-02 08:00 | Diego Teixeira; Eduardo Carvalho; Miguel Filipe | 6h | 60 |
| 9 | 1.1.7 | Reunião Semanal 7 |  | 2h | 2025-01-09 08:00 | 2025-01-09 10:00 |  | 1.75d |  | start no earlier than 2025-01-09 08:00 | Diego Teixeira; Eduardo Carvalho; Miguel Filipe | 6h | 60 |
| 10 | 1.2 | **Análise e Desenho** |  | 5.75d | 2024-11-25 08:00 | 2024-12-02 15:00 |  | 5.38d |  |  |  | 56h | 560 |
| 11 | 1.2.1 | **Etapa 1** |  | 0.75d | 2024-11-25 08:00 | 2024-11-25 15:00 |  | 5.38d | 0d |  |  | 17h | 170 |
| 12 | 1.2.1.1 | Introdução |  | 2h | 2024-11-25 08:00 | 2024-11-25 10:00 |  | 0.19d | 0d |  | Eduardo Carvalho | 2h | 20 |
| 13 | 1.2.1.2 | Definição Lógica de Negócio |  | 1h | 2024-11-25 10:00 | 2024-11-25 11:00 | 12 | 7.88d |  |  | Diego Teixeira | 1h | 10 |
| 14 | 1.2.1.3 | Análise de Impacto do Sistema |  | 1h | 2024-11-25 08:00 | 2024-11-25 09:00 |  | 8.12d |  |  | Miguel Filipe | 1h | 10 |
| 15 | 1.2.1.4 | Análise Concorrencial |  | 2h | 2024-11-25 08:00 | 2024-11-25 10:00 |  | 8d |  |  | Diego Teixeira | 2h | 20 |
| 16 | 1.2.1.5 | Especificação de RF e RNF |  | 4h | 2024-11-25 10:00 | 2024-11-25 15:00 | 12 | 0.19d |  |  | Eduardo Carvalho; Miguel Filipe | 8h | 80 |
| 17 | 1.2.1.6 | Wireframes |  | 3h | 2024-11-25 08:00 | 2024-11-25 11:00 |  | 7.88d | 0d |  | Miguel Filipe | 3h | 30 |
| 18 | 1.2.1.7 | Entrega Relatório Etapa 1 | milestone | 0d | 2024-11-25 11:00 | 2024-11-25 11:00 | 17 | 7.88d |  |  |  |  |  |
| 19 | 1.2.2 | **Etapa 2** |  | 5d | 2024-11-25 15:00 | 2024-12-02 15:00 | 11 | 5.38d | 0d |  |  | 39h | 390 |
| 20 | 1.2.2.1 | Diagramas Casos de Uso |  | 2d | 2024-11-25 15:00 | 2024-11-27 15:00 |  | 5.38d | 0d |  | Eduardo Carvalho | 16h | 160 |
| 21 | 1.2.2.2 | Descrição dos Casos de Uso |  | 1d | 2024-11-27 15:00 | 2024-11-28 15:00 | 20 | 5.38d | 0d |  | Diego Teixeira | 8h | 80 |
| 22 | 1.2.2.3 | Stakeholders |  | 3h | 2024-11-28 15:00 | 2024-11-29 09:00 | 21 | 5.38d | 0.12d |  | Miguel Filipe | 3h | 30 |
| 23 | 1.2.2.4 | Metodologia |  | 4h | 2024-12-02 08:00 | 2024-12-02 12:00 | 22 | 5.38d | 0d |  | Eduardo Carvalho | 4h | 40 |
| 24 | 1.2.2.5 | Desvios |  | 2h | 2024-12-02 13:00 | 2024-12-02 15:00 | 23 | 5.38d |  |  | Miguel Filipe | 2h | 20 |
| 25 | 1.2.2.6 | Conclusão |  | 6h | 2024-11-29 08:00 | 2024-11-29 15:00 | 21 | 6.38d | 0d |  | Eduardo Carvalho | 6h | 60 |
| 26 | 1.2.2.7 | Entrega Relatório Etapa 2 | milestone | 0d | 2024-11-29 15:00 | 2024-11-29 15:00 | 25 | 6.38d |  |  |  |  |  |

| ID | WBS | Task | Type | Duration | Start | Finish | Predecessors | Total slack | Free slack | Resources | Work | Cost |
| --- | --- | --- | --- | --- | --- | --- | --- | --- | --- | --- | --- | --- |
| 27 | 1.3 | **Desenvolvimento** |  | 22.12d | 2024-12-02 15:00 | 2025-01-03 16:00 | 19 | 5.12d |  |  | 192h | 1,920 |
| 28 | 1.3.1 | **Geral** |  | 2.44d | 2024-12-02 15:00 | 2024-12-05 09:30 |  | 5.38d | 0d |  | 27.5h | 275 |
| 29 | 1.3.1.1 | Criação do Repositório Git |  | 30min | 2024-12-02 15:00 | 2024-12-02 15:30 |  | 5.38d | 0d | Eduardo Carvalho | 0.5h | 5 |
| 30 | 1.3.1.2 | Estrutura Geral do Site |  | 4h | 2024-12-02 15:30 | 2024-12-03 10:30 | 29 | 5.38d | 0d | Eduardo Carvalho | 4h | 40 |
| 31 | 1.3.1.3 | Criação Folha de Estilo |  | 2h | 2024-12-03 10:30 | 2024-12-03 15:30 | 30 | 6.75d |  | Diego Teixeira | 2h | 20 |
| 32 | 1.3.1.4 | Integração com a API |  | 1d | 2024-12-03 10:30 | 2024-12-04 13:30 | 30 | 5.38d | 0d | Miguel Filipe; Eduardo Carvalho | 16h | 160 |
| 33 | 1.3.1.5 | Detalhes do País |  | 5h | 2024-12-04 13:30 | 2024-12-05 09:30 | 32 | 5.38d |  | Miguel Filipe | 5h | 50 |
| 34 | 1.3.2 | **Página Principal** |  | 2d | 2024-12-05 09:30 | 2024-12-09 09:30 | 28 | 5.38d | 0d |  | 16h | 160 |
| 35 | 1.3.2.1 | Estrutura da Página |  | 4h | 2024-12-05 09:30 | 2024-12-05 14:30 |  | 5.38d | 0d | Eduardo Carvalho | 4h | 40 |
| 36 | 1.3.2.2 | Integração da API |  | 8h | 2024-12-05 14:30 | 2024-12-06 14:30 | 35 | 5.38d | 0d | Diego Teixeira | 8h | 80 |
| 37 | 1.3.2.3 | Mostrar Países Aleatoriamente |  | 4h | 2024-12-06 14:30 | 2024-12-09 09:30 | 36 | 5.38d | 0d | Eduardo Carvalho | 4h | 40 |
| 38 | 1.3.2.4 | Página Principal Terminada | milestone | 0d | 2024-12-09 09:30 | 2024-12-09 09:30 | 37 | 5.38d |  |  |  |  |
| 39 | 1.3.3 | **Página Países** |  | 1.75d | 2024-12-09 09:30 | 2024-12-10 16:30 | 34 | 5.38d | 0d |  | 25h | 250 |
| 40 | 1.3.3.1 | Integração da API |  | 8h | 2024-12-09 09:30 | 2024-12-10 09:30 |  | 5.38d | 0d | Diego Teixeira | 8h | 80 |
| 41 | 1.3.3.2 | Mostrar Países |  | 6h | 2024-12-10 09:30 | 2024-12-10 16:30 | 40 | 5.38d |  | Miguel Filipe | 6h | 60 |
| 42 | 1.3.3.3 | Integração dos Filtros |  | 7h | 2024-12-09 09:30 | 2024-12-10 08:30 |  | 5.75d | 0d | Eduardo Carvalho | 7h | 70 |
| 43 | 1.3.3.4 | Função de Pesquisa |  | 4h | 2024-12-10 08:30 | 2024-12-10 13:30 | 42 | 5.75d | 0d | Eduardo Carvalho | 4h | 40 |
| 44 | 1.3.3.5 | Página Países Terminada | milestone | 0d | 2024-12-10 13:30 | 2024-12-10 13:30 | 43 | 5.75d |  |  |  |  |
| 45 | 1.3.4 | **Página Detalhes do País** |  | 4d | 2024-12-10 16:30 | 2024-12-16 16:30 | 39 | 5.38d | 0d |  | 30h | 300 |
| 46 | 1.3.4.1 | Estrutura |  | 8h | 2024-12-10 16:30 | 2024-12-11 16:30 |  | 5.38d | 0d | Diego Teixeira | 8h | 80 |
| 47 | 1.3.4.2 | Integração da API |  | 12h | 2024-12-11 16:30 | 2024-12-13 14:30 | 46 | 5.38d | 0d | Eduardo Carvalho | 12h | 120 |
| 48 | 1.3.4.3 | Mostrar População |  | 6h | 2024-12-13 14:30 | 2024-12-16 11:30 | 47 | 5.38d | 0d | Miguel Filipe | 6h | 60 |
| 49 | 1.3.4.4 | Mostrar Produtos associados ao País |  | 4h | 2024-12-16 11:30 | 2024-12-16 16:30 | 48 | 5.38d | 0d | Diego Teixeira | 4h | 40 |
| 50 | 1.3.4.5 | Página Detalhes Terminada | milestone | 0d | 2024-12-16 16:30 | 2024-12-16 16:30 | 49 | 5.38d |  |  |  |  |

| ID | WBS | Task | Type | Duration | Start | Finish | Predecessors | Total slack | Free slack | Resources | Work | Cost |
| --- | --- | --- | --- | --- | --- | --- | --- | --- | --- | --- | --- | --- |
| 51 | 1.3.5 | **Página Favoritos** |  | 6.19d | 2024-12-16 16:30 | 2024-12-26 09:00 | 45 | 5.38d | 0d |  | 39h | 390 |
| 52 | 1.3.5.1 | **Criar Lista de Favoritos** |  | 3.19d | 2024-12-16 16:30 | 2024-12-20 09:00 |  | 5.38d |  |  | 16h | 160 |
| 53 | 1.3.5.1.1 | Estrutura |  | 1d | 2024-12-16 16:30 | 2024-12-18 09:30 |  | 5.38d | 0d | Miguel Filipe | 8h | 80 |
| 54 | 1.3.5.1.2 | Pedidos e mostrar |  | 1d | 2024-12-18 09:30 | 2024-12-20 09:00 | 53 | 5.38d | 0d | Diego Teixeira | 8h | 80 |
| 55 | 1.3.5.2 | Adicionar Favorito |  | 1d | 2024-12-20 09:00 | 2024-12-23 11:00 | 54 | 5.38d | 0d | Eduardo Carvalho | 8h | 80 |
| 56 | 1.3.5.3 | Remover Favorito |  | 3h | 2024-12-23 11:00 | 2024-12-23 15:00 | 55 | 5.38d | 0d | Eduardo Carvalho | 3h | 30 |
| 57 | 1.3.5.4 | Ordenar Favoritos |  | 6h | 2024-12-23 15:00 | 2024-12-24 15:00 | 56 | 5.38d | 0d | Diego Teixeira | 6h | 60 |
| 58 | 1.3.5.5 | Teste da Web Storage |  | 3h | 2024-12-24 15:00 | 2024-12-26 09:00 | 57 | 5.38d | 0d | Eduardo Carvalho; Miguel Filipe | 6h | 60 |
| 59 | 1.3.5.6 | Página Favoritos Terminada | milestone | 0d | 2024-12-26 09:00 | 2024-12-26 09:00 | 58 | 5.38d |  |  |  |  |
| 60 | 1.3.6 | **Página Sobre** |  | 0.12d | 2024-12-26 09:00 | 2024-12-26 10:00 | 51 | 5.38d | 0d |  | 1h | 10 |
| 61 | 1.3.6.1 | Descrição da Equipa |  | 1h | 2024-12-26 09:00 | 2024-12-26 10:00 |  | 5.38d | 0d | Eduardo Carvalho | 1h | 10 |
| 62 | 1.3.6.2 | Página Sobre Terminada | milestone | 0d | 2024-12-26 10:00 | 2024-12-26 10:00 | 61 | 5.38d |  |  |  |  |
| 63 | 1.3.7 | **Página Contactos** |  | 0.12d | 2024-12-26 10:00 | 2024-12-26 11:00 | 60 | 5.38d | 0.12d |  | 1.5h | 15 |
| 64 | 1.3.7.1 | Formulário de Contacto |  | 1h | 2024-12-26 10:00 | 2024-12-26 11:00 |  | 5.38d |  | Diego Teixeira | 1h | 10 |
| 65 | 1.3.7.2 | Links para Redes Sociais |  | 30min | 2024-12-26 10:00 | 2024-12-26 10:30 |  | 5.44d | 0d | Miguel Filipe | 0.5h | 5 |
| 66 | 1.3.7.3 | Página Contactos Terminada | milestone | 0d | 2024-12-26 10:30 | 2024-12-26 10:30 | 65 | 5.44d |  |  |  |  |
| 67 | 1.3.8 | **Página Loja** |  | 2d | 2024-12-26 13:00 | 2024-12-30 12:00 | 63 | 5.25d | 0d |  | 12h | 120 |
| 68 | 1.3.8.1 | Mostrar Produtos |  | 2h | 2024-12-26 13:00 | 2024-12-26 15:00 |  | 5.25d | 0d | Miguel Filipe | 2h | 20 |
| 69 | 1.3.8.2 | Filtrar por País |  | 2h | 2024-12-26 15:00 | 2024-12-26 17:00 | 68 | 6.38d | 0d | Eduardo Carvalho | 2h | 20 |
| 70 | 1.3.8.3 | Filtrar por Moeda |  | 4h | 2024-12-30 08:00 | 2024-12-30 12:00 | 68 | 5.38d |  | Eduardo Carvalho | 4h | 40 |
| 71 | 1.3.8.4 | Adicionar ao Carrinho de Compras |  | 4h | 2024-12-27 08:00 | 2024-12-27 12:00 | 69 | 6.38d | 0d | Diego Teixeira | 4h | 40 |
| 72 | 1.3.8.5 | Página Loja Terminada | milestone | 0d | 2024-12-27 12:00 | 2024-12-27 12:00 | 71 | 6.38d |  |  |  |  |
| 73 | 1.3.9 | **Página Carrinho** |  | 1d | 2024-12-30 13:00 | 2024-12-31 12:00 | 67 | 5.38d | 0d |  | 14h | 140 |
| 74 | 1.3.9.1 | Aumentar ou Diminuir Quantidade |  | 2h | 2024-12-30 13:00 | 2024-12-30 15:00 |  | 6.12d |  | Eduardo Carvalho | 2h | 20 |
| 75 | 1.3.9.2 | Adicionar Botão de Remover Produto |  | 4h | 2024-12-30 13:00 | 2024-12-30 17:00 |  | 5.88d |  | Miguel Filipe | 4h | 40 |
| 76 | 1.3.9.3 | Finalizar Compra |  | 4h | 2024-12-30 13:00 | 2024-12-30 17:00 |  | 5.38d | 0d | Diego Teixeira | 4h | 40 |
| 77 | 1.3.9.4 | Calcular Custos de Entrega |  | 2h | 2024-12-31 08:00 | 2024-12-31 10:00 | 76 | 5.38d | 0d | Eduardo Carvalho | 2h | 20 |
| 78 | 1.3.9.5 | Métodos de Pagamento |  | 2h | 2024-12-31 10:00 | 2024-12-31 12:00 | 77 | 5.38d | 0d | Diego Teixeira | 2h | 20 |
| 79 | 1.3.9.6 | Página Carrinho Terminada | milestone | 0d | 2024-12-31 12:00 | 2024-12-31 12:00 | 78 | 5.38d |  | Miguel Filipe |  |  |

| ID | WBS | Task | Type | Duration | Start | Finish | Predecessors | Total slack | Free slack | Resources | Work | Cost |
| --- | --- | --- | --- | --- | --- | --- | --- | --- | --- | --- | --- | --- |
| 80 | 1.3.10 | **Testes** |  | 2.38d | 2024-12-31 13:00 | 2025-01-03 16:00 | 73 | 5.12d |  |  | 26h | 260 |
| 81 | 1.3.10.1 | Testes Gerais |  | 4h | 2024-12-31 13:00 | 2024-12-31 17:00 | 73 | 7d |  | Diego Teixeira | 4h | 40 |
| 82 | 1.3.10.2 | Testes de Usabilidade |  | 3h | 2024-12-31 13:00 | 2024-12-31 16:00 |  | 7.12d |  | Miguel Filipe | 3h | 30 |
| 83 | 1.3.10.3 | Testes de Eficiência |  | 3h | 2024-12-31 15:00 | 2025-01-02 14:00 |  | 5.12d | 0d | Eduardo Carvalho | 3h | 30 |
| 84 | 1.3.10.4 | Testes de Fiabilidade |  | 4h | 2025-01-02 14:00 | 2025-01-03 09:00 | 83 | 5.12d | 0d | Eduardo Carvalho | 4h | 40 |
| 85 | 1.3.10.5 | Correção de Erros Críticos |  | 6h | 2025-01-03 09:00 | 2025-01-03 16:00 | 84 | 5.12d | 0d | Diego Teixeira; Miguel Filipe | 12h | 120 |
| 86 | 1.3.11 | Entrega Software Funcional | milestone | 0d | 2025-01-03 16:00 | 2025-01-03 16:00 | 85 | 5.12d |  |  |  |  |
